# MoCab Project Plan

How a schedule from MS Project changed from version to version. A marks actual dates.

## Version 1 (saved 2015-10-26)

Note of the change: Merge branch 'master' of https://github.com/christiansax/MoCap.git

| ID | WBS | Task | Duration | Start | Finish | Predecessors | Total float | Constraint |
| --- | --- | --- | --- | --- | --- | --- | --- | --- |
| 1 | 1 | **Project Preparation** | 4d? | 2015-10-20 | 2015-10-23 |  | 4d |  |
| 2 | 1.1 | **Prepare Documents** | 4d? | 2015-10-20 | 2015-10-23 |  | 4d |  |
| 3 |  | Define specification | 1d? | 2015-10-20 | 2015-10-20 |  | 8.5d |  |
| 4 |  | Create Project Approvement | 1d | 2015-10-21 | 2015-10-21 | 3 | 8.5d |  |
| 5 |  | Assign Tasks | 1d? | 2015-10-22 | 2015-10-22 | 4 | 8.5d |  |
| 6 |  | Set project timeline | 1d? | 2015-10-23 | 2015-10-23 | 5 | 8.5d |  |
| 7 |  | Preparation completed | 0d | 2015-10-23 | 2015-10-23 | 6 | 35.5d |  |
| 8 | 3 | **Design** | 44d? | 2015-10-26 | 2015-12-24 | 7 | 4d |  |
| 9 | 3.1 | **Chat component** | 10.5d | 2015-10-26 | 2015-11-09 |  | 12d |  |
| 10 |  | Define features | 2d | 2015-10-26 | 2015-10-27 |  | 12d |  |
| 11 |  | Create class diagram | 1.5d | 2015-10-28 | 2015-10-29 | 10 | 12d |  |
| 12 |  | Create state diagram | 1.5d | 2015-10-29 | 2015-10-30 | 11 | 12d |  |
| 13 |  | Create messaging diagram | 1.5d | 2015-11-02 | 2015-11-03 | 12 | 12d |  |
| 14 |  | Define test cases | 1d | 2015-11-03 | 2015-11-04 | 13 | 12d |  |
| 15 |  | Define depencies | 1d | 2015-11-04 | 2015-11-05 | 14 | 12d |  |
| 16 |  | Create project UI mockup | 2d | 2015-11-05 | 2015-11-09 | 15 | 12d |  |
| 17 |  | Design completed | 0d | 2015-11-09 | 2015-11-09 | 16 | 12d |  |
| 18 | 3.2 | **Balance component** | 7d | 2015-11-09 | 2015-11-18 | 9 | 12d |  |
| 19 |  | Define features | 1d | 2015-11-09 | 2015-11-10 |  | 12d |  |
| 20 |  | Create class diagram | 1d | 2015-11-10 | 2015-11-11 | 19 | 12d |  |
| 21 |  | Create state diagram | 1d | 2015-11-11 | 2015-11-12 | 20 | 12d |  |
| 22 |  | Create messaging diagram | 1d | 2015-11-12 | 2015-11-13 | 21 | 12d |  |
| 23 |  | Define test cases | 1d | 2015-11-13 | 2015-11-16 | 22 | 12d |  |
| 24 |  | Define depencies | 1d | 2015-11-16 | 2015-11-17 | 23 | 12d |  |
| 25 |  | Create project UI mockup | 1d | 2015-11-17 | 2015-11-18 | 24 | 12d |  |
| 26 |  | Design completed | 0d | 2015-11-18 | 2015-11-18 | 25 | 12d |  |
| 27 | 3.3 | **Communication component** | 8d? | 2015-11-26 | 2015-12-07 |  |  |  |
| 28 |  | Define features | 0.5d | 2015-10-30 | 2015-10-30 |  | 4.5d | start no earlier than 2015-10-30 |
| 29 |  | Create class diagram | 1d | 2015-11-26 | 2015-11-26 | 28 | 4d |  |
| 30 |  | Create state diagram | 0.5d | 2015-11-27 | 2015-11-27 | 29 | 4d |  |
| 31 |  | Create messaging diagram | 1d? | 2015-11-27 | 2015-11-30 | 30 | 4d |  |
| 32 |  | Define test cases | 0.5d | 2015-11-30 | 2015-11-30 | 31 | 4d |  |
| 33 |  | Define depencies | 1d | 2015-12-01 | 2015-12-01 | 32 | 4d |  |
| 34 |  | Design completed | 0d | 2015-12-01 | 2015-12-01 | 33 | 17.5d | finish no earlier than 2015-11-10 |
| 35 | 3.4 | **Logging component** | 6d | 2015-11-18 | 2015-11-26 | 18 | 12d |  |
| 36 |  | Define features | 1d | 2015-11-18 | 2015-11-19 |  | 12d |  |
| 37 |  | Create class diagram | 1d | 2015-11-19 | 2015-11-20 | 36 | 12d |  |
| 38 |  | Create state diagram | 1d | 2015-11-20 | 2015-11-23 | 37 | 12d |  |
| 39 |  | Create messaging diagram | 1d | 2015-11-23 | 2015-11-24 | 38 | 12d |  |
| 40 |  | Define test cases | 1d | 2015-11-24 | 2015-11-25 | 39 | 12d |  |
| 41 |  | Define depencies | 1d | 2015-11-25 | 2015-11-26 | 40 | 12d |  |
| 42 |  | Design completed | 0d | 2015-11-26 | 2015-11-26 | 41 | 12d |  |
| 43 | 3.5 | **Persistence Layer** | 8.5d | 2015-10-30 | 2015-11-11 |  |  |  |
| 44 |  | Define data model | 1d | 2015-11-10 | 2015-11-10 |  | -7d | start no earlier than 2015-11-10 |
| 45 |  | Define features | 1d | 2015-11-11 | 2015-11-11 | 44 | -7d |  |
| 46 |  | Create class diagram | 1.5d | 2015-11-12 | 2015-11-13 | 45 | -7d |  |
| 47 |  | Create state diagram | 1.5d | 2015-11-13 | 2015-11-16 | 46 | -7d |  |
| 48 |  | Create messaging diagram | 1.5d | 2015-11-17 | 2015-11-18 | 47 | -7d |  |
| 49 |  | Define test cases | 1d | 2015-11-18 | 2015-11-19 | 48 | -7d |  |
| 50 |  | Define depencies | 1d | 2015-11-19 | 2015-11-20 | 49 | -7d |  |
| 51 |  | Design completed | 0d | 2015-11-20 | 2015-11-20 | 50 | 24.5d | finish no earlier than 2015-11-20 |
| 52 | 3.6 | **Poll component** | 7d | 2015-11-23 | 2015-12-01 | 43 | 1d |  |
| 53 |  | Define features | 1.5d | 2015-11-23 | 2015-11-24 |  | 1.5d | start no earlier than 2015-11-23 |
| 54 |  | Create class diagram | 0.5d | 2015-11-24 | 2015-11-24 | 53 | 1.5d |  |
| 55 |  | Create state diagram | 0.5d | 2015-11-25 | 2015-11-25 | 54 | 1.5d |  |
| 56 |  | Create messaging diagram | 1d | 2015-11-25 | 2015-11-26 | 55 | 1.5d |  |
| 57 |  | Define test cases | 1d | 2015-11-26 | 2015-11-27 | 56 | 1.5d |  |
| 58 |  | Define depencies | 1d | 2015-11-27 | 2015-11-30 | 57 | 1.5d |  |
| 59 |  | Create poll UI mockup | 1d | 2015-11-30 | 2015-12-01 | 58 | 1.5d |  |
| 60 |  | Design completed | 0d | 2015-12-01 | 2015-12-01 | 59 | 1d | finish no earlier than 2015-12-01 |
| 61 | 3.7 | **Project component** | 9d | 2015-11-26 | 2015-12-09 | 35 | 12d |  |
| 62 |  | Define features | 2d | 2015-11-26 | 2015-11-30 |  | 12d | start no earlier than 2015-11-24 |
| 63 |  | Create class diagram | 1d | 2015-11-30 | 2015-12-01 | 62 | 12d | start no earlier than 2015-11-26 |
| 64 |  | Create state diagram | 1d | 2015-12-01 | 2015-12-02 | 63 | 12d | start no earlier than 2015-11-27 |
| 65 |  | Create messaging diagram | 1d | 2015-12-02 | 2015-12-03 | 64 | 12d | start no earlier than 2015-11-30 |
| 66 |  | Define test cases | 1d | 2015-12-03 | 2015-12-04 | 65 | 12d | start no earlier than 2015-12-01 |
| 67 |  | Define depencies | 1d | 2015-12-04 | 2015-12-07 | 66 | 12d | start no earlier than 2015-12-02 |
| 68 |  | Create project UI mockup | 2d | 2015-12-07 | 2015-12-09 | 67 | 12d | start no earlier than 2015-12-03 |
| 69 |  | Design completed | 0d | 2015-12-09 | 2015-12-09 | 68 | 12d | start no earlier than 2015-12-07 |
| 70 | 3.8 | **Security component** | 4.5d | 2015-12-02 | 2015-12-08 | 52 | 1d |  |

| ID | WBS | Task | Duration | Start | Finish | Predecessors | Total float | Constraint |
| --- | --- | --- | --- | --- | --- | --- | --- | --- |
| 71 |  | Define features | 1.5d | 2015-12-02 | 2015-12-03 |  | 1d | start no earlier than 2015-12-02 |
| 72 |  | Create class diagram | 1d | 2015-12-03 | 2015-12-04 | 71 | 1d |  |
| 73 |  | Create state diagram | 1d | 2015-12-04 | 2015-12-07 | 72 | 1d |  |
| 74 |  | Define test cases | 1d | 2015-12-07 | 2015-12-08 | 73 | 1d |  |
| 75 |  | Design completed | 0d | 2015-12-08 | 2015-12-08 | 74 | 1d |  |
| 76 | 3.9 | **Reporting component** | 5d | 2015-12-09 | 2015-12-15 | 70 | 0.5d |  |
| 77 |  | Define features | 1d | 2015-12-09 | 2015-12-09 |  | 0.5d | start no earlier than 2015-12-09 |
| 78 |  | Create class diagram | 0.5d | 2015-12-10 | 2015-12-10 | 77 | 0.5d |  |
| 79 |  | Create state diagram | 0.5d | 2015-12-10 | 2015-12-10 | 78 | 0.5d |  |
| 80 |  | Create messaging diagram | 0.5d | 2015-12-11 | 2015-12-11 | 79 | 0.5d |  |
| 81 |  | Define test cases | 0.5d | 2015-12-11 | 2015-12-11 | 80 | 0.5d |  |
| 82 |  | Define depencies | 0.5d | 2015-12-14 | 2015-12-14 | 81 | 0.5d |  |
| 83 |  | Create reporting UI mockup | 1.5d | 2015-12-14 | 2015-12-15 | 82 | 0.5d |  |
| 84 |  | Design completed | 0d | 2015-12-15 | 2015-12-15 | 83 | 0.5d |  |
| 85 | 3.10 | **Task component** | 7d | 2015-12-16 | 2015-12-24 | 76 | 0.5d |  |
| 86 |  | Define features | 1.5d | 2015-12-16 | 2015-12-17 |  | 0.5d | start no earlier than 2015-12-16 |
| 87 |  | Create class diagram | 0.5d | 2015-12-17 | 2015-12-17 | 86 | 0.5d |  |
| 88 |  | Create state diagram | 0.5d | 2015-12-18 | 2015-12-18 | 87 | 0.5d |  |
| 89 |  | Create messaging diagram | 1d | 2015-12-18 | 2015-12-21 | 88 | 0.5d |  |
| 90 |  | Define test cases | 1d | 2015-12-21 | 2015-12-22 | 89 | 0.5d |  |
| 91 |  | Define depencies | 1d | 2015-12-22 | 2015-12-23 | 90 | 0.5d |  |
| 92 |  | Create task UI mockup | 1.5d | 2015-12-23 | 2015-12-24 | 91 | 0.5d |  |
| 93 |  | Design completed | 0d | 2015-12-24 | 2015-12-24 | 92 | 0.5d |  |
| 94 | 3.11 | **UI component** | 11d | 2015-12-09 | 2015-12-24 | 61 | 31.5d |  |
| 95 |  | Create UI mockups | 3d | 2015-12-09 | 2015-12-14 |  | 31.5d | start no earlier than 2015-12-07 |
| 96 |  | Design UI interfaces | 3d | 2015-12-14 | 2015-12-17 | 95 | 31.5d | start no earlier than 2015-12-10 |
| 97 |  | Define test cases | 2d | 2015-12-17 | 2015-12-21 | 96 | 31.5d | start no earlier than 2015-12-15 |
| 98 |  | Create UI diagram | 3d | 2015-12-21 | 2015-12-24 | 97 | 31.5d | start no earlier than 2015-12-17 |
| 99 |  | Design completed | 0d | 2015-12-24 | 2015-12-24 | 98 | 31.5d | start no earlier than 2015-12-22 |
| 100 | 4 | **Review** | 6d | 2015-12-25 | 2016-01-01 | 17, 26, 34, 42, 51, 60, 69, 84, 93 | 0.5d |  |
| 101 | 4.1 | **Review components** | 5d | 2015-12-25 | 2015-12-31 |  | 0.5d |  |
| 102 |  | Chat | 1d | 2015-12-25 | 2015-12-25 | 85 | 0.5d |  |
| 103 |  | Balance | 1d | 2015-12-28 | 2015-12-28 | 102 | 0.5d |  |
| 104 |  | Communication | 1d | 2015-12-25 | 2015-12-25 |  | 4.5d |  |
| 105 |  | Logging | 1d | 2015-12-29 | 2015-12-29 | 103 | 0.5d |  |
| 106 |  | Persistence Layer | 1d | 2015-12-28 | 2015-12-28 |  | 3.5d | start no earlier than 2015-12-28 |
| 107 |  | Poll | 1d | 2015-12-29 | 2015-12-29 |  | 2.5d | start no earlier than 2015-12-29 |
| 108 |  | Project | 1d | 2015-12-30 | 2015-12-30 | 105 | 0.5d |  |
| 109 |  | Reporting | 1d | 2015-12-30 | 2015-12-30 |  | 1.5d | start no earlier than 2015-12-30 |
| 110 |  | Task | 1d | 2015-12-31 | 2015-12-31 |  | 0.5d | start no earlier than 2015-12-31 |
| 111 |  | UI | 1d | 2015-12-31 | 2015-12-31 | 108 | 0.5d |  |
| 112 |  | Review completed | 1d | 2016-01-01 | 2016-01-01 | 102, 103, 104, 105, 106, 107, 108, 109, 110, 111 | 0.5d |  |
| 113 | 5 | **Develop** | 18.5d | 2016-01-04 | 2016-01-28 | 112 | 0d |  |
| 114 |  | Chat | 3d | 2016-01-04 | 2016-01-06 | 110 | 0.5d |  |
| 115 |  | Balance | 2d | 2016-01-07 | 2016-01-08 | 114 | 0.5d | start no earlier than 2016-01-07 |
| 116 |  | Communication | 3.5d | 2016-01-04 | 2016-01-07 | 111 | 0.5d | finish no earlier than 2016-01-06 |
| 117 |  | Logging | 4d | 2016-01-11 | 2016-01-14 | 115 | 0.5d | start no earlier than 2016-01-11 |
| 118 |  | Persistence Layer | 3.5d | 2016-01-07 | 2016-01-12 | 116 | 0.5d | start no earlier than 2016-01-07 |
| 119 |  | Poll | 4d | 2016-01-13 | 2016-01-18 | 118 | 0.5d | start no earlier than 2016-01-13 |
| 120 |  | Project | 4d | 2016-01-15 | 2016-01-20 | 117 | 0.5d | start no earlier than 2016-01-15 |
| 121 |  | Security | 3d | 2016-01-19 | 2016-01-21 | 119 | 0.5d | start no earlier than 2016-01-19 |
| 122 |  | Reporting | 2.5d | 2016-01-22 | 2016-01-26 | 121 | 0.5d |  |
| 123 |  | Task | 1.5d | 2016-01-27 | 2016-01-28 | 122 | 0d | start no earlier than 2016-01-27 |
| 124 |  | UI | 5d | 2016-01-21 | 2016-01-27 | 120 | 0.5d | start no earlier than 2016-01-21 |
| 125 |  | Development completed | 0d | 2016-01-28 | 2016-01-28 | 114, 115, 116, 117, 118, 119, 120, 122, 123, 124 | 0d | start no earlier than 2016-01-28 |
| 126 | 6 | **Test** | 1.5d | 2016-01-28 | 2016-01-29 | 125 | 0d |  |
| 127 |  | Chat | 1.5d | 2016-01-28 | 2016-01-29 |  | 0d | start no earlier than 2016-01-28 |
| 128 |  | Balance | 1.5d | 2016-01-28 | 2016-01-29 |  | 0d | start no earlier than 2016-01-28 |
| 129 |  | Communication | 1.5d | 2016-01-28 | 2016-01-29 |  | 0d | start no earlier than 2016-01-28 |
| 130 |  | Logging | 1.5d | 2016-01-28 | 2016-01-29 |  | 0d | start no earlier than 2016-01-28 |
| 131 |  | Persistence Layer | 1.5d | 2016-01-28 | 2016-01-29 |  | 0d | start no earlier than 2016-01-28 |
| 132 |  | Poll | 1.5d | 2016-01-28 | 2016-01-29 |  | 0d | start no earlier than 2016-01-28 |
| 133 |  | Project | 1.5d | 2016-01-28 | 2016-01-29 |  | 0d | start no earlier than 2016-01-28 |
| 134 |  | Reporting | 1.5d | 2016-01-28 | 2016-01-29 |  | 0d | start no earlier than 2016-01-28 |
| 135 |  | Task | 1.5d | 2016-01-28 | 2016-01-29 |  | 0d | start no earlier than 2016-01-28 |
| 136 |  | UI | 1.5d | 2016-01-28 | 2016-01-29 |  | 0d | start no earlier than 2016-01-28 |
| 137 |  | Testing completed | 0d | 2016-01-29 | 2016-01-29 | 127, 128, 129, 130, 131, 132, 133, 134, 135, 136 | 0d | start no earlier than 2016-01-29 |
| 138 | 7 | **Documentation** | 4d | 2016-02-01 | 2016-02-04 | 137 | 0d |  |
| 139 |  | Merge | 1d | 2016-02-01 | 2016-02-01 |  | 0d |  |
| 140 |  | Review | 1d | 2016-02-02 | 2016-02-02 | 139 | 0d |  |

| ID | WBS | Task | Duration | Start | Finish | Predecessors | Total float |
| --- | --- | --- | --- | --- | --- | --- | --- |
| 141 |  | Finalize | 1d | 2016-02-03 | 2016-02-03 | 140 | 0d |
| 142 |  | Documentation completed | 1d | 2016-02-04 | 2016-02-04 | 139, 140, 141 | 0d |
| 143 | 8 | **Finalize** | 1d | 2016-02-05 | 2016-02-05 | 142 | 0d |
| 144 |  | Project completed | 1d | 2016-02-05 | 2016-02-05 |  | 0d |

## Version 2 (saved 2016-01-03)

Note of the change: Merge branch 'master' of https://github.com/christiansax/MoCap.git

Last finish stays 2016-02-05. Complete tasks 0 → 6.

Changed:

| ID | Task | Start | Finish | Duration | Complete | Total float |
| --- | --- | --- | --- | --- | --- | --- |
| 8 | **Design** | 2015-10-26 A |  | 44d? → 44d | 0% → 12% | 4d → 31d |
| 9 | **Chat component** | 2015-10-26 A |  |  | 0% → 90% | 12d → none |
| 10 | Define features | 2015-10-26 A | 2015-10-27 A |  | 0% → 100% | 12d → none |
| 11 | Create class diagram | 2015-10-28 A | 2015-10-29 A |  | 0% → 100% | 12d → none |
| 12 | Create state diagram | 2015-10-29 A | 2015-10-30 A |  | 0% → 100% | 12d → none |
| 13 | Create messaging diagram | 2015-11-02 A | 2015-11-03 A |  | 0% → 100% | 12d → none |
| 14 | Define test cases | 2015-11-03 A | 2015-11-04 A |  | 0% → 100% | 12d → none |
| 15 | Define depencies | 2015-11-04 A | 2015-11-05 A |  | 0% → 100% | 12d → none |
| 16 | Create project UI mockup | 2015-11-05 A |  |  | 0% → 48% |  |

## Version 3 (saved 2016-01-09)

Note of the change: Update Project Plan

Last finish 2016-02-05 → 2016-02-18 (+13d). Complete tasks 6 → 19.

Changed:

| ID | Task | Start | Finish | Duration | Complete | Total float | Other |
| --- | --- | --- | --- | --- | --- | --- | --- |
| 8 | **Design** |  |  | 44d → 44d? | 12% → 37% | 31d → 40.5d |  |
| 18 | **Balance component** | 2015-11-09 A |  |  | 0% → 75% | 12d → 0d |  |
| 19 | Define features | 2015-11-09 A | 2015-11-10 A |  | 0% → 100% | 12d → none |  |
| 20 | Create class diagram | 2015-11-10 A | 2015-11-11 A |  | 0% → 100% | 12d → none |  |
| 21 | Create state diagram | 2015-11-11 A | 2015-11-12 A |  | 0% → 100% | 12d → none |  |
| 22 | Create messaging diagram | 2015-11-12 A | 2015-11-13 A |  | 0% → 100% | 12d → none |  |
| 23 | Define test cases | 2015-11-13 A | 2015-11-16 A |  | 0% → 100% | 12d → none |  |
| 24 | Define depencies | 2015-11-16 A |  |  | 0% → 25% | 12d → 0d |  |
| 61 | **Project component** | 2015-11-26 A |  |  | 0% → 75% | 12d → 0d |  |
| 62 | Define features | 2015-11-26 A | 2015-11-30 A |  | 0% → 100% | 12d → none |  |
| 63 | Create class diagram | 2015-11-30 A | 2015-12-01 A |  | 0% → 100% | 12d → none |  |
| 64 | Create state diagram | 2015-12-01 A | 2015-12-02 A |  | 0% → 100% | 12d → none |  |
| 65 | Create messaging diagram | 2015-12-02 A | 2015-12-03 A |  | 0% → 100% | 12d → none |  |
| 66 | Define test cases | 2015-12-03 A | 2015-12-04 A |  | 0% → 100% | 12d → none |  |
| 67 | Define depencies | 2015-12-04 A |  |  | 0% → 75% | 12d → 0d |  |
| 94 | **UI component** | 2015-12-09 A |  |  | 0% → 75% | 31.5d → 41d |  |
| 95 | Create UI mockups | 2015-12-09 A | 2015-12-14 A |  | 0% → 100% | 31.5d → none |  |
| 96 | Design UI interfaces | 2015-12-14 A | 2015-12-17 A |  | 0% → 100% | 31.5d → none |  |
| 97 | Define test cases | 2015-12-17 A | 2015-12-21 A |  | 0% → 100% | 31.5d → none |  |
| 98 | Create UI diagram | 2015-12-21 A |  |  | 0% → 8% | 31.5d → 41d |  |
| 113 | **Develop** |  | 2016-01-28 → 2016-02-09 (+12d) | 18.5d → 28d |  |  |  |
| 114 | Chat | 2016-01-04 → 2016-01-16 (+12d) | 2016-01-06 → 2016-01-19 (+13d) |  |  | 0.5d → 0d | constraint none → start no earlier than 2016-01-16 |
| 115 | Balance | 2016-01-07 → 2016-01-20 (+13d) | 2016-01-08 → 2016-01-21 (+13d) |  |  | 0.5d → 0d |  |
| 117 | Logging | 2016-01-11 → 2016-01-22 (+11d) | 2016-01-14 → 2016-01-27 (+13d) |  |  | 0.5d → 0d |  |
| 119 | Poll |  | 2016-01-18 → 2016-01-16 (-2d) |  |  | 0.5d → 10d |  |
| 120 | Project | 2016-01-15 → 2016-01-28 (+13d) | 2016-01-20 → 2016-02-02 (+13d) |  |  | 0.5d → 0d |  |
| 124 | UI | 2016-01-21 → 2016-02-03 (+13d) | 2016-01-27 → 2016-02-09 (+13d) |  |  | 0.5d → 0d |  |
| 125 | Development completed | 2016-01-28 → 2016-02-09 (+12d) | 2016-01-28 → 2016-02-09 (+12d) |  |  |  |  |
| 126 | **Test** | 2016-01-28 → 2016-02-10 (+13d) | 2016-01-29 → 2016-02-11 (+13d) |  |  |  |  |
| 127 | Chat | 2016-01-28 → 2016-02-10 (+13d) | 2016-01-29 → 2016-02-11 (+13d) |  |  |  |  |
| 128 | Balance | 2016-01-28 → 2016-02-10 (+13d) | 2016-01-29 → 2016-02-11 (+13d) |  |  |  |  |
| 129 | Communication | 2016-01-28 → 2016-02-10 (+13d) | 2016-01-29 → 2016-02-11 (+13d) |  |  |  |  |
| 130 | Logging | 2016-01-28 → 2016-02-10 (+13d) | 2016-01-29 → 2016-02-11 (+13d) |  |  |  |  |
| 131 | Persistence Layer | 2016-01-28 → 2016-02-10 (+13d) | 2016-01-29 → 2016-02-11 (+13d) |  |  |  |  |
| 132 | Poll | 2016-01-28 → 2016-02-10 (+13d) | 2016-01-29 → 2016-02-11 (+13d) |  |  |  |  |
| 133 | Project | 2016-01-28 → 2016-02-10 (+13d) | 2016-01-29 → 2016-02-11 (+13d) |  |  |  |  |
| 134 | Reporting | 2016-01-28 → 2016-02-10 (+13d) | 2016-01-29 → 2016-02-11 (+13d) |  |  |  |  |
| 135 | Task | 2016-01-28 → 2016-02-10 (+13d) | 2016-01-29 → 2016-02-11 (+13d) |  |  |  |  |
| 136 | UI | 2016-01-28 → 2016-02-10 (+13d) | 2016-01-29 → 2016-02-11 (+13d) |  |  |  |  |
| 137 | Testing completed | 2016-01-29 → 2016-02-11 (+13d) | 2016-01-29 → 2016-02-11 (+13d) |  |  |  |  |
| 138 | **Documentation** | 2016-02-01 → 2016-02-11 (+10d) | 2016-02-04 → 2016-02-17 (+13d) |  |  |  |  |
| 139 | Merge | 2016-02-01 → 2016-02-11 (+10d) | 2016-02-01 → 2016-02-12 (+11d) |  |  |  |  |
| 140 | Review | 2016-02-02 → 2016-02-12 (+10d) | 2016-02-02 → 2016-02-15 (+13d) |  |  |  |  |
| 141 | Finalize | 2016-02-03 → 2016-02-15 (+12d) | 2016-02-03 → 2016-02-16 (+13d) |  |  |  |  |
| 142 | Documentation completed | 2016-02-04 → 2016-02-16 (+12d) | 2016-02-04 → 2016-02-17 (+13d) |  |  |  |  |
| 143 | **Finalize** | 2016-02-05 → 2016-02-17 (+12d) | 2016-02-05 → 2016-02-18 (+13d) |  |  |  |  |
| 144 | Project completed | 2016-02-05 → 2016-02-17 (+12d) | 2016-02-05 → 2016-02-18 (+13d) |  |  |  |  |

## Version 4 (saved 2016-01-09)

Note of the change: - Updated Project Plan with new dates

Last finish 2016-02-18 → 2016-03-10 (+21d). Complete tasks 19 → 3.

Added:

| ID | Task | Duration | Start | Finish | Predecessors | Constraint | Resources |
| --- | --- | --- | --- | --- | --- | --- | --- |
| 3 | Timesheets | 1d | 2015-10-28 A | 2015-10-28 A | 2 | start no earlier than 2015-10-26 | Christian Sax |
| 4 | Proposal | 1.5d | 2015-10-29 A | 2015-10-30 A | 3 | start no earlier than 2015-10-28 | Christian Sax |
| 5 | Project Preparation Completed | 0d | 2015-10-30 | 2015-10-30 | 4 | finish no earlier than 2015-10-30 |  |
| 6 | **Requirement Engineering** | 71d | 2015-11-02 | 2016-02-08 | 1 |  |  |
| 24 | Requirement Engineering Completed | 1d | 2016-01-11 | 2016-01-11 |  | start no earlier than 2016-01-09 |  |
| 25 | **Imlementation** | 43d | 2016-01-12 | 2016-03-10 | 5, 24 |  |  |

Removed: 3 Define specification; 5 Assign Tasks; 6 Set project timeline; 7 Preparation completed; 8 Design; 10 Define features; 11 Create class diagram; 12 Create state diagram; 13 Create messaging diagram; 15 Define depencies; 16 Create project UI mockup; 18 Balance component; 19 Define features; 25 Create project UI mockup; 28 Define features; 29 Create class diagram; 30 Create state diagram; 31 Create messaging diagram; 32 Define test cases; 33 Define depencies; 36 Define features; 37 Create class diagram; 38 Create state diagram; 39 Create messaging diagram; 40 Define test cases; 41 Define depencies; 42 Design completed; 44 Define data model; 45 Define features; 46 Create class diagram; 47 Create state diagram; 48 Create messaging diagram; 49 Define test cases; 50 Define depencies; 51 Design completed; 53 Define features; 54 Create class diagram; 55 Create state diagram; 56 Create messaging diagram; 57 Define test cases; 58 Define depencies; 59 Create poll UI mockup; 60 Design completed; 62 Define features; 63 Create class diagram; 64 Create state diagram; 65 Create messaging diagram; 66 Define test cases; 67 Define depencies; 68 Create project UI mockup; 69 Design completed; 70 Security component; 71 Define features; 72 Create class diagram; 73 Create state diagram; 74 Define test cases; 75 Design completed; 77 Define features; 78 Create class diagram; 79 Create state diagram; 80 Create messaging diagram; 81 Define test cases; 82 Define depencies; 83 Create reporting UI mockup; 84 Design completed; 85 Task component; 86 Define features; 87 Create class diagram; 88 Create state diagram; 89 Create messaging diagram; 90 Define test cases; 91 Define depencies; 92 Create task UI mockup; 93 Design completed; 94 UI component; 95 Create UI mockups; 96 Design UI interfaces; 97 Define test cases; 98 Create UI diagram; 100 Review; 101 Review components; 103 Balance; 104 Communication; 106 Persistence Layer; 111 UI; 112 Review completed; 115 Balance; 116 Communication; 118 Persistence Layer; 124 UI; 128 Balance; 129 Communication; 131 Persistence Layer; 136 UI; 139 Merge; 140 Review; 141 Finalize

Changed:

| ID | Task | Start | Finish | Duration | Complete | Total float | Predecessors | Other |
| --- | --- | --- | --- | --- | --- | --- | --- | --- |
| 1 | **Project preparation** | 2015-10-20 → 2015-10-26 A (+6d) | 2015-10-23 → 2015-10-30 (+7d) | 4d? → 5d | 0% → 99% | 0d → none |  | was named Project Preparation |
| 2 | Documentation template | 2015-10-21 → 2015-10-26 A (+5d) | 2015-10-21 → 2015-10-27 A (+6d) | 1d → 2d | 0% → 100% | 0d → none | Define specification → none | was named Create Project Approvement; constraint none → start no earlier than 2015-10-26 |
| 7 | Project | 2015-12-30 → 2015-11-26 (-34d) | 2015-12-30 → 2015-11-26 (-34d) |  |  | 10d → 75d | 11 → none | constraint none → start no earlier than 2015-11-26; resources Christian Sax → Fabian Ochsner |
| 8 | Chat | 2015-12-25 → 2015-11-02 (-53d) | 2015-12-25 → 2015-11-03 (-52d) | 1d → 1.5d |  | 10d → 92.5d | Task component → none | constraint none → start no earlier than 2015-10-26; resources Christian Sax → Fabian Ochsner |
| 9 | Task | 2015-12-31 → 2015-12-14 (-17d) | 2015-12-31 → 2015-12-15 (-16d) | 1d → 2d |  | 0.5d → 39.5d |  | constraint start no earlier than 2015-12-31 → start no earlier than 2015-12-14; resources Fabian Ochsner → Christian Sax |
| 10 | Poll | 2015-12-29 → 2015-12-16 (-13d) | 2015-12-29 → 2015-12-18 (-11d) | 1d → 3d |  | 2.5d → 39.5d | none → 9 | constraint start no earlier than 2015-12-29 → start no earlier than 2015-12-14; resources Fabian Ochsner → Christian Sax |
| 11 | Logging | 2015-12-29 → 2016-01-06 (+8d) | 2015-12-29 → 2016-01-07 (+9d) | 1d → 1.5d |  | 10d → 41.5d | Balance → 10 | constraint none → start no earlier than 2016-01-06 |
| 12 | Accounting | 2015-12-24 → 2015-11-09 (-45d) | 2015-12-24 → 2015-11-09 (-45d) | 0d → 1d |  | 41d → 88d | Create UI diagram → none | was named Design completed; constraint start no earlier than 2015-12-22 → start no earlier than 2015-11-09; resources none → Fabian Ochsner |
| 13 | Reporting | 2015-12-30 → 2016-01-11 (+12d) | 2015-12-30 → 2016-01-13 (+14d) | 1d → 3d |  | 1.5d → 41d |  | constraint start no earlier than 2015-12-30 → start no earlier than 2016-01-09; resources Fabian Ochsner → none |
| 14 | Security | 2016-01-19 → 2016-01-11 (-8d) | 2016-01-21 → 2016-01-14 (-7d) | 3d → 4d |  | 9d → 40d | 29 → 11 | constraint start no earlier than 2016-01-19 → start no earlier than 2016-01-09 |
| 15 | **Backend** | 2016-01-04 → 2015-12-21 (-14d) | 2016-02-09 → 2015-12-25 (-46d) | 28d → 4.5d |  | 0d → none | Review completed → none | was named Develop |
| 16 | DB Model | 2016-02-09 → 2015-12-21 (-50d) | 2016-02-09 → 2015-12-22 (-49d) | 0d → 2d |  | 0d → 39.5d | 27, Balance, Communication, 30, Persistence Layer, 29, 26, 32, 28, UI → 10 | was named Development completed; constraint start no earlier than 2016-01-28 → start no earlier than 2015-12-16; resources none → Christian Sax |
| 17 | Interaction Layer | 2016-02-10 → 2015-12-23 (-49d) | 2016-02-11 → 2015-12-24 (-49d) |  |  | 0d → 39.5d |  | was named Test; constraint none → start no earlier than 2015-12-16; resources none → Christian Sax |
| 18 | Config Layer | 2016-02-11 → 2015-12-24 (-49d) | 2016-02-11 → 2015-12-25 (-48d) | 0d → 1d |  | 0d → 39.5d | 40, Balance, Communication, 43, Persistence Layer, 42, 39, 45, 41, UI → 17 | was named Testing completed; constraint start no earlier than 2016-01-29 → start no earlier than 2015-12-16; resources none → Christian Sax |
| 19 | **Webservice** | 2016-02-11 → 2016-01-11 (-31d) | 2016-02-17 → 2016-02-08 (-9d) | 4d → 21d |  | 0d → none | 18 → none | was named Documentation |
| 20 | Query Specification | 2016-02-16 → 2016-01-11 (-36d) | 2016-02-17 → 2016-01-14 (-34d) | 1d → 4d |  | 0d → 29d | Merge, Review, Finalize → 18 | was named Documentation completed; constraint none → start no earlier than 2016-01-11; resources none → Christian Sax |
| 21 | Update Specification | 2016-02-17 → 2016-01-15 (-33d) | 2016-02-18 → 2016-01-21 (-28d) | 1d → 5d |  | 0d → 29d |  | was named Finalize; constraint none → start no earlier than 2016-01-11; resources none → Christian Sax |
| 22 | Update Documentation | 2016-02-17 → 2016-02-01 (-16d) | 2016-02-18 → 2016-02-08 (-10d) | 1d → 6d |  | 0d → 23d | none → 21 | was named Project completed; constraint none → start no earlier than 2016-02-01; resources none → Christian Sax, Fabian Ochsner |
| 23 | UI Design | 2015-10-20 → 2015-12-24 (+65d) | 2015-10-23 → 2015-12-29 (+67d) | 4d? → 4d |  | 0d → 52d |  | was named Prepare Documents; constraint none → start no earlier than 2015-12-24; resources none → Fabian Ochsner |
| 26 | Project | 2016-01-28 → 2016-03-07 (+39d) | 2016-02-02 → 2016-03-08 (+35d) | 4d → 2d |  | 0d → 2d | 30 → none | constraint start no earlier than 2016-01-15 → start no earlier than 2016-03-07 |
| 27 | Chat | 2016-01-16 → 2016-02-17 (+32d) | 2016-01-19 → 2016-02-19 (+31d) |  |  | 0d → 14d | 9 → none | constraint start no earlier than 2016-01-16 → start no earlier than 2016-02-17 |
| 28 | Task | 2016-01-27 → 2016-02-01 (+5d) | 2016-01-28 → 2016-02-03 (+6d) | 1.5d → 3d |  | 8.5d → 26d | 32 → none | constraint start no earlier than 2016-01-27 → start no earlier than 2016-02-01 |
| 29 | Poll | 2016-01-13 → 2016-02-12 (+30d) | 2016-01-16 → 2016-02-17 (+32d) |  |  | 10d → 16d | Persistence Layer → none | constraint start no earlier than 2016-01-13 → start no earlier than 2016-02-12 |
| 30 | Logging | 2016-01-22 → 2016-01-12 (-10d) | 2016-01-27 → 2016-01-15 (-12d) |  |  | 0d → 39d | Balance → none | constraint start no earlier than 2016-01-11 → start no earlier than 2016-01-09; resources Fabian Ochsner → Christian Sax |
| 31 | Accounting | 2015-10-26 A → 2016-02-24 (+121d) | 2015-11-09 → 2016-02-25 (+108d) | 10.5d → 2d | 90% → 0% | none → 10d |  | was named Chat component; constraint none → start no earlier than 2016-02-24 |
| 32 | Reporting | 2016-01-22 → 2016-01-12 (-10d) | 2016-01-26 → 2016-01-18 (-8d) | 2.5d → 5d |  | 9d → 38d | 14 → none | constraint none → start no earlier than 2016-01-09; resources Christian Sax → none |
| 33 | Security | 2015-11-26 → 2016-01-18 (+53d) | 2015-12-07 → 2016-01-25 (+49d) | 8d? → 6d |  | none → 33d |  | was named Communication component; constraint none → start no earlier than 2016-01-16 |
| 34 | Webservice | 2015-11-18 → 2016-01-22 (+65d) | 2015-11-26 → 2016-02-04 (+70d) | 6d → 10d |  | 0d → 25d | Balance component → none | was named Logging component; constraint none → start no earlier than 2016-01-22; resources Fabian Ochsner → Christian Sax |
| 35 | UI Implementation | 2015-10-30 → 2016-03-07 (+129d) | 2015-11-11 → 2016-03-10 (+120d) | 8.5d → 4d |  | none → 0d |  | was named Persistence Layer; constraint none → start no earlier than 2016-03-07; resources Christian Sax → Fabian Ochsner |
| 36 | Implementation Completed | 2015-11-23 → 2016-02-29 (+98d) | 2015-12-01 → 2016-02-29 (+90d) | 7d → 1d |  | 10.5d → 3d | 35 → none | was named Poll component; constraint none → start no earlier than 2016-02-29; resources Christian Sax → none |
| 37 | **Testing** | 2015-11-26 A → 2016-03-01 (+96d) | 2015-12-09 → 2016-03-07 (+89d) | 9d → 5d | 75% → 0% | 0d → 3d | 34 → 36 | was named Project component; resources Fabian Ochsner → none |
| 38 | Specify TestCases | 2015-12-09 → 2016-03-01 (+83d) | 2015-12-15 → 2016-03-07 (+83d) |  |  | 10d → 3d | Security component → none | was named Reporting component; resources Christian Sax → none |
| 39 | Project | 2016-02-10 → 2016-03-01 (+20d) | 2016-02-11 → 2016-03-01 (+19d) | 1.5d → 1d |  | 0d → 7d |  | constraint start no earlier than 2016-01-28 → none; resources Christian Sax → none |
| 40 | Chat | 2016-02-10 → 2016-03-01 (+20d) | 2016-02-11 → 2016-03-02 (+20d) |  |  | 0d → 6.5d |  | constraint start no earlier than 2016-01-28 → none; resources Christian Sax → none |
| 41 | Task | 2016-02-10 → 2016-03-01 (+20d) | 2016-02-11 → 2016-03-02 (+20d) |  |  | 0d → 6.5d |  | constraint start no earlier than 2016-01-28 → none; resources Fabian Ochsner → none |
| 42 | Poll | 2016-02-10 → 2016-03-01 (+20d) | 2016-02-11 → 2016-03-02 (+20d) | 1.5d → 2d |  | 0d → 6d |  | constraint start no earlier than 2016-01-28 → none; resources Fabian Ochsner → none |
| 43 | Logging | 2016-02-10 → 2016-03-01 (+20d) | 2016-02-11 → 2016-03-01 (+19d) | 1.5d → 1d |  | 0d → 7d |  | constraint start no earlier than 2016-01-28 → none; resources Christian Sax → none |
| 44 | Accounting | 2015-11-03 A → 2016-03-01 (+119d) | 2015-11-04 A → 2016-03-01 (+118d) |  | 100% → 0% | none → 7d | Create messaging diagram → none | was named Define test cases |
| 45 | Reporting | 2016-02-10 → 2016-03-01 (+20d) | 2016-02-11 → 2016-03-02 (+20d) | 1.5d → 2d |  | 0d → 6d |  | constraint start no earlier than 2016-01-28 → none; resources Fabian Ochsner → none |
| 46 | Security | 2015-11-09 → 2016-03-01 (+113d) | 2015-11-09 → 2016-03-02 (+114d) | 0d → 2d |  | 0d → 6d | Create project UI mockup → none | was named Design completed |
| 47 | Webservice | 2015-11-16 A → 2016-03-01 (+106d) | 2015-11-17 → 2016-03-07 (+111d) | 1d → 5d | 25% → 0% | 0d → 3d | 48 → none | was named Define depencies |
| 48 | UI Implementation | 2015-11-13 A → 2016-03-01 (+109d) | 2015-11-16 A → 2016-03-02 (+107d) | 1d → 2d | 100% → 0% | none → 6d | 49 → none | was named Define test cases |
| 49 | Testing Completed | 2015-11-12 A → 2016-03-01 (+110d) | 2015-11-13 A → 2016-03-01 (+109d) |  | 100% → 0% | none → 5d | 50 → none | was named Create messaging diagram |
| 50 | **Follow up** | 2015-11-11 A → 2016-03-02 (+112d) | 2015-11-12 A → 2016-03-03 (+112d) | 1d → 2d | 100% → 0% | none → 5d | 51 → 49 | was named Create state diagram |
| 51 | Prepare official Documents | 2015-11-10 A → 2016-03-02 (+113d) | 2015-11-11 A → 2016-03-03 (+113d) | 1d → 2d | 100% → 0% | none → 5d | Define features → none | was named Create class diagram |
| 52 | Prepare Media | 2015-11-18 → 2016-03-02 (+105d) | 2015-11-18 → 2016-03-03 (+106d) | 0d → 2d |  | 0d → 5d | Create project UI mockup → none | was named Design completed |
| 53 | Handover | 2015-12-01 → 2016-03-02 (+92d) | 2015-12-01 → 2016-03-02 (+92d) | 0d → 1d |  | 17.5d → 6d | Define depencies → none | was named Design completed; constraint finish no earlier than 2015-11-10 → none |

## Version 5 (saved 2016-01-09)

Note of the change: Update MockUp UseCase Update(chat: read, image, kick/balance: create)

Last finish stays 2016-03-10. Complete tasks 3 → 10.

Added:

| ID | Task | Duration | Start | Finish | Constraint |
| --- | --- | --- | --- | --- | --- |
| 19 | Backend Completed | 0d | 2016-01-01 A | 2016-01-01 A | start no earlier than 2016-01-01 |

Changed:

| ID | Task | Start | Finish | Duration | Complete | Total float | Predecessors | Other |
| --- | --- | --- | --- | --- | --- | --- | --- | --- |
| 1 | **Project preparation** |  | 2015-10-30 A |  | 99% → 100% |  |  |  |
| 5 | Project Preparation Completed | 2015-10-30 A | 2015-10-30 A |  | 0% → 100% | 84d → none |  |  |
| 6 | **Requirement Engineering** | 2015-11-02 A |  |  | 0% → 23% |  |  |  |
| 9 | Task | 2015-12-14 A | 2015-12-15 A |  | 0% → 100% | 39.5d → none |  |  |
| 10 | Poll | 2015-12-16 A | 2015-12-18 A |  | 0% → 100% | 39.5d → none |  |  |
| 15 | **Backend** | 2015-12-21 A | 2015-12-25 → 2016-01-01 A (+7d) | 4.5d → 10d | 0% → 100% |  |  |  |
| 16 | DB Model | 2015-12-21 A | 2015-12-22 A |  | 0% → 100% | 39.5d → none |  |  |
| 17 | Interaction Layer | 2015-12-23 A | 2015-12-24 A |  | 0% → 100% | 39.5d → none |  |  |
| 18 | Config Layer | 2015-12-24 A | 2015-12-25 A |  | 0% → 100% | 39.5d → none |  |  |
| 25 | Requirement Engineering Completed | 2016-01-11 → 2016-01-09 (-2d) | 2016-01-11 → 2016-01-09 (-2d) | 1d → 0d |  | 33d → 34d |  |  |
| 26 | **Imlementation** | 2016-01-12 → 2016-01-11 (-1d) |  | 43d → 44d |  |  |  |  |
| 31 | Logging | 2016-01-12 → 2016-01-11 (-1d) | 2016-01-15 → 2016-01-14 (-1d) |  |  | 39d → 40d |  |  |
| 33 | Reporting | 2016-01-12 → 2016-01-11 (-1d) | 2016-01-18 → 2016-01-15 (-3d) |  |  | 38d → 39d |  |  |
| 37 | Implementation Completed |  |  | 1d → 0d |  | 3d → 9d |  |  |
| 38 | **Testing** | 2016-03-01 → 2016-01-12 (-49d) | 2016-03-07 → 2016-01-18 (-49d) |  |  | 3d → none | 37 → none |  |
| 39 | Specify TestCases | 2016-03-01 → 2016-01-12 (-49d) | 2016-03-07 → 2016-01-18 (-49d) |  |  | 3d → 38d |  | constraint none → start no earlier than 2016-01-12 |
| 40 | Project | 2016-03-01 → 2016-01-12 (-49d) | 2016-03-01 → 2016-01-12 (-49d) |  |  | 7d → 42d |  |  |
| 41 | Chat | 2016-03-01 → 2016-01-12 (-49d) | 2016-03-02 → 2016-01-13 (-49d) |  |  | 6.5d → 41.5d |  |  |
| 42 | Task | 2016-03-01 → 2016-01-12 (-49d) | 2016-03-02 → 2016-01-13 (-49d) |  |  | 6.5d → 41.5d |  |  |
| 43 | Poll | 2016-03-01 → 2016-01-12 (-49d) | 2016-03-02 → 2016-01-13 (-49d) |  |  | 6d → 41d |  |  |
| 44 | Logging | 2016-03-01 → 2016-01-12 (-49d) | 2016-03-01 → 2016-01-12 (-49d) |  |  | 7d → 42d |  |  |
| 45 | Accounting | 2016-03-01 → 2016-01-12 (-49d) | 2016-03-01 → 2016-01-12 (-49d) |  |  | 7d → 42d |  |  |
| 46 | Reporting | 2016-03-01 → 2016-01-12 (-49d) | 2016-03-02 → 2016-01-13 (-49d) |  |  | 6d → 41d |  |  |
| 47 | Security | 2016-03-01 → 2016-01-12 (-49d) | 2016-03-02 → 2016-01-13 (-49d) |  |  | 6d → 41d |  |  |
| 48 | Webservice | 2016-03-01 → 2016-01-12 (-49d) | 2016-03-07 → 2016-01-18 (-49d) |  |  | 3d → 38d |  |  |
| 49 | UI Implementation | 2016-03-01 → 2016-01-12 (-49d) | 2016-03-02 → 2016-01-13 (-49d) |  |  | 6d → 41d |  |  |
| 50 | Testing Completed | 2016-03-01 → 2016-01-12 (-49d) | 2016-03-01 → 2016-01-12 (-49d) |  |  | 5d → 40d |  |  |
| 51 | **Follow up** | 2016-03-02 → 2016-01-13 (-49d) | 2016-03-03 → 2016-01-14 (-49d) |  |  | 5d → 40d |  |  |
| 52 | Prepare official Documents | 2016-03-02 → 2016-01-13 (-49d) | 2016-03-03 → 2016-01-14 (-49d) |  |  | 5d → 40d |  |  |
| 53 | Prepare Media | 2016-03-02 → 2016-01-13 (-49d) | 2016-03-03 → 2016-01-14 (-49d) |  |  | 5d → 40d |  |  |
| 54 | Handover | 2016-03-02 → 2016-01-13 (-49d) | 2016-03-02 → 2016-01-13 (-49d) |  |  | 6d → 41d |  |  |
